# 循环器具系统开发计划

Schedule from a web Gantt chart, 2025-11-17 to 2026-01-29.
Saturdays and Sundays are off

## Schedule

| ID | WBS | Task | Duration | Start | Finish | Complete |
| --- | --- | --- | --- | --- | --- | --- |
| 2 | 1 | 包装数据维护功能 | 1d | 2025-11-17 | 2025-11-17 | 100% |
| 3 | 2 | 包装-物料数据维护功能 | 1d | 2025-11-18 | 2025-11-18 | 100% |
| 4 | 3 | 投入入库/撤销流程搭建+定制开发 | 3d | 2025-11-19 | 2025-11-21 | 100% |
| 5 | 4 | 领用/退回流程搭建+定制开发 | 2d | 2025-12-22 | 2025-12-23 | 30% |
| 6 | 5 | 空箱调拨/返空流程+定制开发 | 2d | 2025-12-24 | 2025-12-25 | 30% |
| 7 | 6 | **满箱入库/退回流程** | 12d | 2025-12-26 | 2026-01-12 |  |
| 8 | 6.1 | 入库/退回流程搭建 | 1d | 2025-12-26 | 2025-12-26 |  |
| 9 | 6.2 | 满箱入库接口 | 2d | 2025-12-26 | 2025-12-29 |  |
| 10 | 6.3 | PDA EDI收货改造 | 2d | 2025-12-30 | 2025-12-31 |  |
| 11 | 6.4 | 包装台组托入库接口改造 | 2d | 2025-12-31 | 2026-01-01 |  |
| 12 | 6.5 | PDA直采件上架改造 | 2d | 2026-01-05 | 2026-01-06 |  |
| 13 | 6.6 | PDA验货改造 | 2d | 2026-01-06 | 2026-01-07 |  |
| 14 | 6.7 | 返工指令下达流程改造 | 2d | 2026-01-07 | 2026-01-08 |  |
| 15 | 6.8 | 采购负数申请流程改造 | 2d | 2026-01-08 | 2026-01-09 |  |
| 16 | 6.9 | 采购退货处理流程改造 | 2d | 2026-01-09 | 2026-01-12 |  |
| 17 | 7 | **调拨/出库流程** | 5d | 2026-01-13 | 2026-01-19 |  |
| 18 | 7.1 | 搭建出库和调拨流程 | 1d | 2026-01-13 | 2026-01-13 |  |
| 19 | 7.2 | 日发货计划流程改造 | 2d | 2026-01-13 | 2026-01-14 |  |
| 20 | 7.3 | 驻外仓退回出库流程改造 | 2d | 2026-01-14 | 2026-01-15 |  |
| 21 | 7.4 | 客户VMI退回流程改造 | 2d | 2026-01-15 | 2026-01-16 |  |
| 22 | 7.5 | PDA装车确认改造 | 2d | 2026-01-16 | 2026-01-19 |  |
| 23 | 8 | 历史交付数转换循环箱数报表 | 2d | 2026-01-20 | 2026-01-21 |  |
| 24 | 9 | 未来需求数转换循环箱数报表 | 2d | 2026-01-22 | 2026-01-23 |  |
| 25 | 10 | 生产周计划转换循环箱数报表 | 2d | 2026-01-26 | 2026-01-27 |  |
| 26 | 11 | 全链条库存数据报表 | 2d | 2026-01-28 | 2026-01-29 |  |

| ID | WBS | Task | Duration | Start | Finish |
| --- | --- | --- | --- | --- | --- |
| 27 | 12 | **循环箱系统测试计划** | 12d | 2025-12-22 | 2026-01-06 |
| 28 | 12.1 | 基础数据维护功能测试 | 1d | 2025-12-22 | 2025-12-22 |
| 29 | 12.2 | 投入入库/撤销流程测试 | 1d | 2025-12-23 | 2025-12-23 |
| 30 | 12.3 | 领用/退回流程测试 | 1d | 2025-12-24 | 2025-12-24 |
| 31 | 12.4 | 空箱调拨/返空测试 | 1d | 2025-12-25 | 2025-12-25 |
| 32 | 12.5 | 满箱入库/退回测试 | 2d | 2025-12-26 | 2025-12-29 |
| 33 | 12.6 | 满箱出库/调拨测试 | 2d | 2025-12-30 | 2025-12-31 |
| 34 | 12.7 | 数据台账测试 | 3d | 2026-01-02 | 2026-01-06 |
